# 酒店管理系统项目计划

Schedule from MS Project, 2024-12-23 to 2025-07-09, costs in $, A marks actual dates.

## Calendars

- 罗德岛工作日历: Mon-Sat 09:00-12:00, 13:00-17:00; Sun off. Exceptions (off unless hours are given): 2024-12-25 (圣诞假期), 2024-12-28 09:00-12:00 (周年庆, recurring).

## Resources

| Resource | Rate | Cost per use |
| --- | --- | --- |
| 项目经理-王伟 | 100 |  |
| 产品经理-李芳 | 100 |  |
| 架构师-赵宇 | 90 |  |
| Sr.程-陈思 | 80 |  |
| Sr.程-张明 | 80 |  |
| 程-刘婷 | 70 |  |
| 程-周华 | 70 |  |
| Sr.测试-孙丽 | 75 |  |
| Sr.测试-王刚 | 75 |  |
| 测试-李强 | 60 |  |
| 测试-赵磊 | 60 |  |
| 文档开发-张媛 | 55 |  |
| 配置管理-刘斌 | 55 |  |
| 客户代表-王芳 |  | 500 |

## Schedule

| ID | WBS | Task | Type | Duration | Start | Finish | Predecessors | Complete | Remaining | Total slack | Free slack | Constraint | Resources | Work | Actual work | Cost | Actual cost |
| --- | --- | --- | --- | --- | --- | --- | --- | --- | --- | --- | --- | --- | --- | --- | --- | --- | --- |
| 1 | DW-LJY-1 | **员工管理系统项目计划(WBS)** |  | 147.5d | 2024-12-23 08:00 A | 2025-07-09 10:00 |  | 1% | 146.16d | 0d |  |  |  | 1868h | 16.8h | 145,710 | 1,820 |
| 2 | DW-LJY-1.1 | **项目计划阶段** |  | 13.38d | 2024-12-23 08:00 A | 2025-01-10 16:00 |  | 11% | 11.94d | 134.12d |  |  |  | 126h | 16.8h | 12,300 | 1,820 |
| 3 | DW-LJY-1.1.1 | 项目启动 |  | 1d | 2024-12-23 08:00 A | 2024-12-23 17:00 |  | 45% | 0.55d | 1.12d | 0.12d |  | 产品经理-李芳; 项目经理-王伟; 客户代表-王芳 | 22h | 8.8h | 1,900 | 1,020 |
| 4 | DW-LJY-1.1.2 | 制定范围计划 |  | 2d | 2024-12-24 10:00 A | 2024-12-27 11:00 | 3 | 50% | 1d | 0d |  |  | 项目经理-王伟 | 16h | 8h | 1,600 | 800 |
| 5 | DW-LJY-1.1.3 | 制定成本计划 |  | 2d | 2024-12-27 11:00 | 2024-12-31 11:00 | 4 |  |  | 0d |  |  | 项目经理-王伟 | 16h |  | 1,600 |  |
| 6 | DW-LJY-1.1.4 | 制定进度计划 |  | 3d | 2024-12-31 11:00 | 2025-01-03 11:00 | 5 |  |  | 0d |  |  | 项目经理-王伟 | 24h |  | 2,400 |  |
| 7 | DW-LJY-1.1.5 | 制定其他计划 |  | 5d | 2025-01-03 11:00 | 2025-01-10 11:00 | 6 |  |  | 0d |  |  | 项目经理-王伟 | 40h |  | 4,000 |  |
| 8 | DW-LJY-1.1.6 | 项目计划评审 |  | 0.5d | 2025-01-10 11:00 | 2025-01-10 16:00 | 7 |  |  | 0d |  |  | 项目经理-王伟; 产品经理-李芳 | 8h |  | 800 |  |
| 9 | DW-LJY-1.1.7 | 项目计划书 | milestone | 0d | 2025-01-10 16:00 | 2025-01-10 16:00 | 8 |  |  | 134.12d |  | start no earlier than 2025-01-09 08:00 |  |  |  |  |  |
| 10 | DW-LJY-1.2 | **系统分析** |  | 38.38d | 2025-01-14 10:00 | 2025-03-06 09:00 |  |  |  | 0d |  |  |  | 270h |  | 19,165 |  |
| 11 | DW-LJY-1.2.1 | 可行性分析 |  | 3d | 2025-01-14 10:00 | 2025-02-11 12:00 | 8FS+2d |  |  | 0d |  | start no earlier than 2024-12-19 09:00 | 产品经理-李芳 | 24h |  | 2,400 |  |
| 12 | DW-LJY-1.2.2 | 业务流程分析 |  | 5d | 2025-02-11 13:00 | 2025-02-18 12:00 | 11 |  |  | 0d |  |  | 产品经理-李芳 | 40h |  | 4,000 |  |
| 13 | DW-LJY-1.2.3 | **需求分析** |  | 11.88d | 2025-02-18 13:00 | 2025-03-06 09:00 |  |  |  | 0d |  |  |  | 206h |  | 12,765 |  |
| 14 | DW-LJY-1.2.3.1 | 功能需求分析 |  | 9.12d | 2025-02-18 13:00 | 2025-03-03 14:00 | 12 |  |  | 0d |  |  | 产品经理-李芳; 客户代表-王芳 | 144h |  | 7,600 |  |
| 15 | DW-LJY-1.2.3.2 | 非功能需求分析 |  | 2d | 2025-03-03 14:00 | 2025-03-05 14:00 | 14 |  |  | 0d |  |  | 架构师-赵宇; 客户代表-王芳; 产品经理-李芳 | 45h |  | 3,540 |  |
| 16 | DW-LJY-1.2.3.3 | 系统需求文档评审会 |  | 0.5d | 2025-03-05 14:00 | 2025-03-06 09:00 | 15 |  |  | 0d |  |  | 项目经理-王伟; 产品经理-李芳; 文档开发-张媛; 客户代表-王芳; 架构师-赵宇 | 17h |  | 1,625 |  |
| 17 | DW-LJY-1.2.3.4 | 需求规格说明书 | milestone | 0d | 2025-03-06 09:00 | 2025-03-06 09:00 | 16 |  |  | 0d |  |  |  |  |  |  |  |
| 18 | DW-LJY-1.3 | **系统设计** |  | 35.5d | 2025-03-06 09:00 | 2025-04-22 14:00 |  |  |  | 0d |  |  |  | 344h |  | 29,320 |  |
| 19 | DW-LJY-1.3.1 | 总体设计 |  | 10d | 2025-03-06 09:00 | 2025-03-18 16:00 | 17 |  |  | 0d |  |  | 架构师-赵宇 | 80h |  | 7,200 |  |
| 20 | DW-LJY-1.3.2 | 接口设计 |  | 10d | 2025-03-18 16:00 | 2025-03-31 14:00 | 19 |  |  | 0d |  |  | 架构师-赵宇 | 80h |  | 7,200 |  |
| 21 | DW-LJY-1.3.3 | 界面设计 |  | 10d | 2025-03-31 14:00 | 2025-04-14 14:00 | 20 |  |  | 0d |  |  | Sr.程-陈思 | 80h |  | 6,400 |  |
| 22 | DW-LJY-1.3.4 | **模块设计** |  | 5.25d | 2025-04-14 14:00 | 2025-04-21 14:00 |  |  |  | 0d |  |  |  | 80h |  | 6,400 |  |
| 23 | DW-LJY-1.3.4.1 | 前端模块设计 |  | 5d | 2025-04-14 14:00 | 2025-04-21 14:00 | 21 |  |  | 0d |  |  | Sr.程-张明 | 40h |  | 3,200 |  |
| 24 | DW-LJY-1.3.4.2 | 后端模块设计 |  | 5d | 2025-04-14 14:00 | 2025-04-21 14:00 | 21 |  |  | 0d |  |  | Sr.程-陈思 | 40h |  | 3,200 |  |
| 25 | DW-LJY-1.3.5 | 系统设计文档评审会 |  | 1d | 2025-04-21 14:00 | 2025-04-22 14:00 | 23, 24 |  |  | 0d |  |  | 架构师-赵宇; 项目经理-王伟; Sr.测试-孙丽 | 24h |  | 2,120 |  |
| 26 | DW-LJY-1.3.6 | 系统设计说明书 | milestone | 0d | 2025-04-22 14:00 | 2025-04-22 14:00 | 25 |  |  | 0d |  |  |  |  |  |  |  |

| ID | WBS | Task | Type | Duration | Start | Finish | Predecessors | Total slack | Constraint | Resources | Work | Cost |
| --- | --- | --- | --- | --- | --- | --- | --- | --- | --- | --- | --- | --- |
| 27 | DW-LJY-1.4 | **系统实现** |  | 33.25d | 2025-04-22 14:00 | 2025-06-05 14:00 |  | 0d |  |  | 915h | 68,460 |
| 28 | DW-LJY-1.4.1 | 制定编码规则 |  | 1d | 2025-04-22 14:00 | 2025-04-23 14:00 | 26 | 0d |  | Sr.程-陈思 | 8h | 640 |
| 29 | DW-LJY-1.4.2 | 前端代码实现及单元测试 |  | 26.75d | 2025-04-23 14:00 | 2025-05-30 11:00 | 28 | 3.75d |  | Sr.程-陈思; 程-周华 | 419h | 31,380 |
| 30 | DW-LJY-1.4.3 | 后端代码实现及单元测试 |  | 30d | 2025-04-23 14:00 | 2025-06-04 14:00 | 28 | 0d |  | Sr.程-张明; 程-刘婷 | 480h | 36,000 |
| 31 | DW-LJY-1.4.4 | 软件包制作 |  | 1d | 2025-06-04 14:00 | 2025-06-05 14:00 | 29, 30 | 0d |  | 配置管理-刘斌 | 8h | 440 |
| 32 | DW-LJY-1.4.5 | 可测试的软件安装包 | milestone | 0d | 2025-06-05 14:00 | 2025-06-05 14:00 | 31 | 0d |  |  |  |  |
| 33 | DW-LJY-1.5 | **系统测试** |  | 17d | 2025-06-05 14:00 | 2025-06-27 17:00 |  | 0d |  |  | 157h | 11,585 |
| 34 | DW-LJY-1.5.1 | 编写测试计划 |  | 2d | 2025-06-05 14:00 | 2025-06-09 14:00 | 32 | 0d |  | Sr.测试-王刚 | 16h | 1,200 |
| 35 | DW-LJY-1.5.2 | 设计测试用例 |  | 5d | 2025-06-09 14:00 | 2025-06-16 14:00 | 34 | 0d |  | Sr.测试-孙丽 | 40h | 3,000 |
| 36 | DW-LJY-1.5.3 | 集成测试 |  | 4d | 2025-06-16 14:00 | 2025-06-20 14:00 | 35 | 0d |  | 测试-李强 | 32h | 1,920 |
| 37 | DW-LJY-1.5.4 | 系统测试 |  | 4d | 2025-06-20 14:00 | 2025-06-26 14:00 | 36 | 0d |  | Sr.测试-王刚 | 32h | 2,400 |
| 38 | DW-LJY-1.5.5 | 验收测试 |  | 0.88d | 2025-06-26 14:00 | 2025-06-27 12:00 | 37 | 0d |  | Sr.测试-王刚; 测试-李强; 项目经理-王伟; 产品经理-李芳; 客户代表-王芳 | 33h | 2,845 |
| 39 | DW-LJY-1.5.6 | 验收测试报告 | milestone | 0d | 2025-06-27 12:00 | 2025-06-27 12:00 | 38 | 0d |  | 文档开发-张媛 |  |  |
| 40 | DW-LJY-1.5.7 | 测试总结 |  | 0.5d | 2025-06-27 13:00 | 2025-06-27 17:00 | 39 | 0d |  | 文档开发-张媛 | 4h | 220 |
| 41 | DW-LJY-1.6 | **系统部署上线** |  | 7d | 2025-06-30 10:00 | 2025-07-09 10:00 |  | 0d |  |  | 56h | 4,880 |
| 42 | DW-LJY-1.6.1 | 环境准备 |  | 1d | 2025-06-30 10:00 | 2025-07-01 10:00 | 40FS+1d | 0d |  | 配置管理-刘斌 | 8h | 440 |
| 43 | DW-LJY-1.6.2 | 软件安装及配置 |  | 1d | 2025-07-01 10:00 | 2025-07-02 10:00 | 42 | 0d |  | 配置管理-刘斌 | 8h | 440 |
| 44 | DW-LJY-1.6.3 | 用户培训 |  | 5d | 2025-07-02 10:00 | 2025-07-09 10:00 | 43 | 0d |  | 产品经理-李芳 | 40h | 4,000 |
| 45 | DW-LJY-1.7 | **周例会** |  | 119.5d | 2024-12-23 09:00 | 2025-06-02 10:00 |  | 28d |  |  |  |  |
| 46 | DW-LJY-1.7.1 | 周例会 1 |  | 1h | 2024-12-23 09:00 | 2024-12-23 10:00 |  | 147.38d | start no earlier than 2024-12-23 08:00 |  |  |  |
| 47 | DW-LJY-1.7.2 | 周例会 2 |  | 1h | 2024-12-30 09:00 | 2024-12-30 10:00 |  | 143.5d | start no earlier than 2024-12-30 08:00 |  |  |  |
| 48 | DW-LJY-1.7.3 | 周例会 3 |  | 1h | 2025-01-06 09:00 | 2025-01-06 10:00 |  | 138.25d | start no earlier than 2025-01-06 08:00 |  |  |  |
| 49 | DW-LJY-1.7.4 | 周例会 4 |  | 1h | 2025-01-13 09:00 | 2025-01-13 10:00 |  | 133d | start no earlier than 2025-01-13 08:00 |  |  |  |
| 50 | DW-LJY-1.7.5 | 周例会 5 |  | 1h | 2025-01-20 09:00 | 2025-01-20 10:00 |  | 127.75d | start no earlier than 2025-01-20 08:00 |  |  |  |
| 51 | DW-LJY-1.7.6 | 周例会 6 |  | 1h | 2025-01-27 09:00 | 2025-01-27 10:00 |  | 122.5d | start no earlier than 2025-01-27 08:00 |  |  |  |
| 52 | DW-LJY-1.7.7 | 周例会 7 |  | 1h | 2025-02-03 09:00 | 2025-02-03 10:00 |  | 117.25d | start no earlier than 2025-02-03 08:00 |  |  |  |
| 53 | DW-LJY-1.7.8 | 周例会 8 |  | 1h | 2025-02-10 09:00 | 2025-02-10 10:00 |  | 112d | start no earlier than 2025-02-10 08:00 |  |  |  |
| 54 | DW-LJY-1.7.9 | 周例会 9 |  | 1h | 2025-02-17 09:00 | 2025-02-17 10:00 |  | 106.75d | start no earlier than 2025-02-17 08:00 |  |  |  |
| 55 | DW-LJY-1.7.10 | 周例会 10 |  | 1h | 2025-02-24 09:00 | 2025-02-24 10:00 |  | 101.5d | start no earlier than 2025-02-24 08:00 |  |  |  |
| 56 | DW-LJY-1.7.11 | 周例会 11 |  | 1h | 2025-03-03 09:00 | 2025-03-03 10:00 |  | 96.25d | start no earlier than 2025-03-03 08:00 |  |  |  |
| 57 | DW-LJY-1.7.12 | 周例会 12 |  | 1h | 2025-03-10 09:00 | 2025-03-10 10:00 |  | 91d | start no earlier than 2025-03-10 08:00 |  |  |  |
| 58 | DW-LJY-1.7.13 | 周例会 13 |  | 1h | 2025-03-17 09:00 | 2025-03-17 10:00 |  | 85.75d | start no earlier than 2025-03-17 08:00 |  |  |  |
| 59 | DW-LJY-1.7.14 | 周例会 14 |  | 1h | 2025-03-24 09:00 | 2025-03-24 10:00 |  | 80.5d | start no earlier than 2025-03-24 08:00 |  |  |  |
| 60 | DW-LJY-1.7.15 | 周例会 15 |  | 1h | 2025-03-31 09:00 | 2025-03-31 10:00 |  | 75.25d | start no earlier than 2025-03-31 08:00 |  |  |  |
| 61 | DW-LJY-1.7.16 | 周例会 16 |  | 1h | 2025-04-07 09:00 | 2025-04-07 10:00 |  | 70d | start no earlier than 2025-04-07 08:00 |  |  |  |
| 62 | DW-LJY-1.7.17 | 周例会 17 |  | 1h | 2025-04-14 09:00 | 2025-04-14 10:00 |  | 64.75d | start no earlier than 2025-04-14 08:00 |  |  |  |
| 63 | DW-LJY-1.7.18 | 周例会 18 |  | 1h | 2025-04-21 09:00 | 2025-04-21 10:00 |  | 59.5d | start no earlier than 2025-04-21 08:00 |  |  |  |
| 64 | DW-LJY-1.7.19 | 周例会 19 |  | 1h | 2025-04-28 09:00 | 2025-04-28 10:00 |  | 54.25d | start no earlier than 2025-04-28 08:00 |  |  |  |
| 65 | DW-LJY-1.7.20 | 周例会 20 |  | 1h | 2025-05-05 09:00 | 2025-05-05 10:00 |  | 49d | start no earlier than 2025-05-05 08:00 |  |  |  |
| 66 | DW-LJY-1.7.21 | 周例会 21 |  | 1h | 2025-05-12 09:00 | 2025-05-12 10:00 |  | 43.75d | start no earlier than 2025-05-12 08:00 |  |  |  |
| 67 | DW-LJY-1.7.22 | 周例会 22 |  | 1h | 2025-05-19 09:00 | 2025-05-19 10:00 |  | 38.5d | start no earlier than 2025-05-19 08:00 |  |  |  |
| 68 | DW-LJY-1.7.23 | 周例会 23 |  | 1h | 2025-05-26 09:00 | 2025-05-26 10:00 |  | 33.25d | start no earlier than 2025-05-26 08:00 |  |  |  |
| 69 | DW-LJY-1.7.24 | 周例会 24 |  | 1h | 2025-06-02 09:00 | 2025-06-02 10:00 |  | 28d | start no earlier than 2025-06-02 08:00 |  |  |  |
